# portfolio msproject

Schedule from MS Project, 2026-06-01 to 2026-12-01, costs in $, A marks actual dates.

## Calendars

- Copy of Standard: Mon off; Tue-Fri 08:00-12:00, 13:00-17:00; Sat-Sun off.

## Resources

| Resource | Unit | Rate | Cost per use | Notes |
| --- | --- | --- | --- | --- |
| Administrative Staff |  |  |  |  |
| Support Staff |  |  |  |  |
| Excavator & Operator |  | 70 |  |  |
| tower crane -rental |  | 120 |  |  |
| Earthwork Subcontractor | m3 |  | 4000 |  |
| Concrete & Formwork Crew | ton |  | 12000 |  |
| Masonry Subcontractor |  |  | 6000 |  |
| MEP Subcontractor |  |  | 8000 |  |
| Roofing Subcontractor |  |  | 5000 |  |
| Finishing & Painting Crew |  |  | 7000 |  |
| Earthwork Materials Pack |  | 1 |  | Qazıntı, çınqıl, bünövrəaltı qum-şeben və s. |
| Formwork & Lumber Pack |  | 1 |  | Taxta, dikt, mismar, şrup, qəlib yağları və s. |
| Reinforcement & Steel Pack |  | 1 |  | Armaturlar, fiksatorlar, toxuma telləri, profillər |
| Concrete & Cement Pack |  | 1 |  | Hazır beton, kisə sement, qatqılar |
| Masonry & Brickwork Pack |  | 1 |  | Hörgü daşı, kərpic, hazır hörgü harcı, yapıdırıcılar |
| Plumbing & Drainage Pack |  | 1 |  | Kanalizasiya boruları, PVC, PPR xətlər, fitinqlər |
| Electrical & Cabling Pack |  | 1 |  | Kabellər, qofralar, qutular, avtomatlar |
| Roofing & Structural Timber Pack |  | 1 |  | Dam sacı, daxili çardaq taxtaları, izolyasiya |
| Insulation & Waterproofing Pack |  | 1 |  | Bünövrə və dam tolu, daş yunu, köpüklər |
| Plaster & Drywall Pack |  | 1 |  | Hazır suvaq, alçipan, şpaktovka, profillər |
| Finishing & Flooring Pack |  | 1 |  | Kafel, metlax, yapıdırıcılar, künclüklər, boyalar |
| Doors & Windows Pack |  | 1 |  | Qapılar, pəncərələr, kilidlər, aksesuarlar |
| Project Insurance & Permits |  |  |  | Sənədləşmə və sığorta |
| Site Mobilization & Logistics |  |  |  | Sahənin qurulması, konteynerlərin gətirilməsi, köç xərci |
| Heavy Machinery Rental |  |  |  |  |
| Fuel & Utility Expenses |  |  |  |  |
| Contingency Fund (Fors-major) |  |  |  |  |

## Schedule

| ID | WBS | Task | Type | Duration | Start | Finish | Predecessors | Complete | Remaining | Baseline start | Baseline finish | Baseline duration | Total slack | Free slack | Resources | Work | Actual work | Cost | Baseline cost | Actual cost |
| --- | --- | --- | --- | --- | --- | --- | --- | --- | --- | --- | --- | --- | --- | --- | --- | --- | --- | --- | --- | --- |
| 1 | 1 | Phase 0: Project Overhead & Administration |  | 105d | 2026-06-02 | 2026-12-01 |  |  |  | 2026-06-02 | 2026-12-01 | 105d | 0d |  | Administrative Staff; Contingency Fund (Fors-major) [0.1%]; Project Insurance & Permits [0.1%]; Site Mobilization & Logistics [0.1%]; Support Staff | 1680h |  | 10,500 | 10,500 |  |
| 2 | 2 | **Phase 1: Site Work & Substructure** |  | 96d | 2026-06-01 A | 2026-11-13 |  | 38% | 59.66d | 2026-06-01 | 2026-11-13 | 96d | 9d |  |  | 1136h | 312h | 875,301.11 | 875,301.11 | 144,861.11 |
| 3 | 2.1 | Site Clearing & Earth Excavation |  | 10d | 2026-06-01 A | 2026-06-12 A |  | 100% |  | 2026-06-01 | 2026-06-12 | 10d |  |  | Earthwork Materials Pack; Earthwork Subcontractor [1 m3] | 80h | 80h | 39,000 | 39,000 | 39,000 |
| 4 | 2.2 | Foundation Reinforcement & Formwork |  | 13d | 2026-06-16 A | 2026-07-02 A | 3FS+1d | 100% |  | 2026-06-16 | 2026-07-02 | 13d |  |  | Concrete & Formwork Crew [1 ton]; Formwork & Lumber Pack; Reinforcement & Steel Pack | 104h | 104h | 105,861.11 | 105,861.11 | 105,861.11 |
| 5 | 2.3 | Main Concrete Pouring |  | 3d | 2026-06-02 | 2026-06-04 |  |  |  | 2026-06-02 | 2026-06-04 | 3d | 80d | 0d | Concrete & Cement Pack; Concrete & Formwork Crew [1 ton] | 24h |  | 132,000 | 132,000 |  |
| 6 | 2.4 | Concrete Curing & Hardening |  | 28d | 2026-06-04 A | 2026-07-13 A | 5 | 100% |  | 2026-06-04 | 2026-07-13 | 28d |  |  |  |  |  |  |  |  |
| 7 | 2.5 | **Phase 2: Superstructure** |  | 93d | 2026-06-05 A | 2026-11-13 |  | 13% | 80.9d | 2026-06-05 | 2026-11-13 | 93d | 9d |  |  | 928h | 128h | 598,440 | 598,440 |  |
| 8 | 2.5.1 | 1st Floor Columns & Framework |  | 10d | 2026-07-14 A | 2026-07-27 A | 6 | 100% |  | 2026-07-14 | 2026-07-27 | 10d |  |  | Concrete & Cement Pack; Concrete & Formwork Crew [1 ton]; Formwork & Lumber Pack | 80h | 80h |  |  |  |
| 9 | 2.5.2 | 1st Floor Brickwork & Walls |  | 6d | 2026-07-28 A | 2026-08-04 A | 8 | 100% |  | 2026-07-28 | 2026-08-04 | 6d |  |  | Masonry & Brickwork Pack; Masonry Subcontractor | 48h | 48h |  |  |  |
| 10 | 2.5.3 | 2nd Floor Columns & Framework |  | 10d | 2026-07-28 | 2026-08-12 | 8 |  |  | 2026-07-28 | 2026-08-12 | 10d | 9d | 0d | Concrete & Cement Pack; Concrete & Formwork Crew [1 ton]; Reinforcement & Steel Pack | 80h |  | 137,000 | 137,000 |  |
| 11 | 2.5.4 | 2nd Floor Brickwork & Walls |  | 8d | 2026-08-13 | 2026-08-26 | 10 |  |  | 2026-08-13 | 2026-08-26 | 8d | 9d | 0d | Masonry & Brickwork Pack; Masonry Subcontractor | 64h |  | 51,000 | 51,000 |  |
| 12 | 2.5.5 | **Phase 3: MEP & Utility Installations** |  | 93d | 2026-06-05 | 2026-11-13 |  |  |  | 2026-06-05 | 2026-11-13 | 93d | 9d |  |  | 656h |  | 410,440 | 410,440 |  |
| 13 | 2.5.5.1 | Main Water Line & Sewage Connections |  | 12d | 2026-06-05 | 2026-06-25 | 5 |  |  | 2026-06-05 | 2026-06-25 | 12d | 80d | 0d | MEP Subcontractor; Plumbing & Drainage Pack | 96h |  | 53,000 | 53,000 |  |
| 14 | 2.5.5.2 | Electrical Substation & Transformer Setup |  | 10d | 2026-06-26 | 2026-07-14 | 13 |  |  | 2026-06-26 | 2026-07-14 | 10d | 80d |  | Electrical & Cabling Pack; MEP Subcontractor | 80h |  | 63,000 | 63,000 |  |
| 15 | 2.5.5.3 | Interior Plumbing Rough-in |  | 14d | 2026-08-05 | 2026-08-27 | 9 |  |  | 2026-08-05 | 2026-08-27 | 14d | 54d |  | MEP Subcontractor | 112h |  | 8,000 | 8,000 |  |
| 16 | 2.5.5.4 | **Phase 4: Finishes & Roofing** |  | 46d | 2026-08-27 | 2026-11-13 |  |  |  | 2026-08-27 | 2026-11-13 | 46d | 9d |  |  | 368h |  | 286,440 | 286,440 |  |
| 17 | 2.5.5.4.1 | Roof Installation & Waterproofing |  | 12d | 2026-08-27 | 2026-09-16 | 11 |  |  | 2026-08-27 | 2026-09-16 | 12d | 9d | 0d | Insulation & Waterproofing Pack; Roofing & Structural Timber Pack; Roofing Subcontractor | 96h |  | 100,000 | 100,000 |  |
| 18 | 2.5.5.4.2 | Drywall & Interior Plastering |  | 15d | 2026-09-17 | 2026-10-13 | 17 |  |  | 2026-09-17 | 2026-10-13 | 15d | 9d | 0d | Finishing & Painting Crew; Plaster & Drywall Pack | 120h |  | 47,000 | 47,000 |  |
| 19 | 2.5.5.4.3 | Flooring & Interior Painting |  | 10d | 2026-10-14 | 2026-10-29 | 18 |  |  | 2026-10-14 | 2026-10-29 | 10d | 9d | 0d | Finishing & Flooring Pack; Finishing & Painting Crew | 80h |  | 82,000 | 82,000 |  |
| 20 | 2.5.5.4.4 | Window & Door Installations |  | 7d | 2026-10-14 | 2026-10-23 | 18 |  |  | 2026-10-14 | 2026-10-23 | 7d | 21d |  | Doors & Windows Pack |  |  | 55,000 | 55,000 |  |
| 21 | 2.5.5.4.5 | **Phase 5: Final Testing & Handover** |  | 9d | 2026-10-30 | 2026-11-13 |  |  |  | 2026-10-30 | 2026-11-13 | 9d | 9d |  |  | 72h |  | 2,440 | 2,440 |  |
| 22 | 2.5.5.4.5.1 | Final Inspections & Quality Check |  | 5d | 2026-10-30 | 2026-11-06 | 19 |  |  | 2026-10-30 | 2026-11-06 | 5d | 9d | 0d | Administrative Staff | 40h |  | 1,800 | 1,800 |  |
| 23 | 2.5.5.4.5.2 | Client Walkthrough & Punch List Fixes |  | 4d | 2026-11-10 | 2026-11-13 | 22 |  |  | 2026-11-10 | 2026-11-13 | 4d | 9d | 0d | Support Staff | 32h |  | 640 | 640 |  |
| 24 | 2.5.5.4.5.3 | Project Official Handover (Milestone) | milestone | 0d | 2026-11-13 | 2026-11-13 | 23 |  |  | 2026-11-13 | 2026-11-13 | 0d | 9d |  | Administrative Staff; Support Staff |  |  |  |  |  |
